# Planning.mpp

How a schedule from MS Project changed from version to version. A marks actual dates.

## Version 1 (data date 2017-11-24, saved 2018-01-30)

Note of the change: Planning del proyecto

| ID | WBS | Task | Duration | Start | Finish | Predecessors | Complete |
| --- | --- | --- | --- | --- | --- | --- | --- |
| 1 |  | Inicio del proyecto | 0d | 2017-11-10 | 2017-11-10 |  |  |
| 2 |  | Redacción de la memoria | 65d | 2017-11-10 A | 2018-02-07 A | 1, 14FF | 100% |
| 3 | 3 | **Obtención de datos** | 16d | 2017-11-18 A | 2017-12-08 A | 1FS+6d | 100% |
| 4 |  | Recogida de tweets | 11d | 2017-11-18 A | 2017-12-01 A |  | 100% |
| 5 |  | Análisis inicial tweets | 5d | 2017-12-04 A | 2017-12-08 A | 4 | 100% |
| 6 | 4 | **Limpieza tweets** | 37d | 2017-12-08 A | 2018-01-29 A |  | 100% |
| 7 |  | Detección idioma | 16d | 2017-12-08 A | 2017-12-29 A | 5 | 100% |
| 8 |  | Detección topic | 35d | 2017-12-11 A | 2018-01-26 A | 5 | 100% |
| 9 |  | Detección de usuarios | 36d | 2017-12-11 A | 2018-01-29 A | 5 | 100% |
| 10 | 5 | **Modelo** | 23d | 2018-01-03 A | 2018-02-02 A |  | 100% |
| 11 |  | Construcción del modelo | 23d | 2018-01-03 A | 2018-02-02 A | 7, 8, 9 | 100% |
| 12 | 6 | **Informes y presentación de resultados** | 11d | 2018-01-18 A | 2018-02-01 A |  | 100% |
| 13 |  | Presentación de resultados | 11d | 2018-01-18 A | 2018-02-01 A | 11SS+6d | 100% |
| 14 |  | Entrega del proyecto | 0d | 2018-01-30 | 2018-01-30 | 13 |  |

## Version 2 (data date 2018-02-01, saved 2018-02-25)

Note of the change: Planning actualizado y resul Detect persona

Last finish 2018-02-07 → 2018-03-02 (+23d). Complete tasks 8 → 7.

Changed:

| ID | Task | Start | Finish | Duration | Complete | Total float | Predecessors | Other |
| --- | --- | --- | --- | --- | --- | --- | --- | --- |
| 2 | Redacción de la memoria |  |  |  |  |  |  | resources p [300%] → p [400%] |
| 3 | **Obtención de datos** |  |  |  |  |  | 1FS+6d → 1, 1FS+6d |  |
| 4 | Recogida de tweets |  |  |  |  |  |  | resources p [300%] → p [400%] |
| 5 | Análisis inicial tweets |  |  |  |  |  |  | resources p [300%] → p [400%] |
| 6 | **Limpieza tweets** |  | 2018-01-29 A → 2018-02-14 (+16d) | 37d → 49d | 100% → 97% | none → 0d |  |  |
| 8 | Detección topic |  | 2018-01-26 A → 2018-02-14 (+19d) | 35d → 39d | 100% → 92% | none → 0d |  |  |
| 9 | Detección de usuarios (eliminar empresas y bots) |  |  |  |  |  |  | was named Detección de usuarios; resources p → p [200%] |
| 11 | Construcción del modelo |  |  |  |  |  |  | resources p [150%] → p [200%] |
| 13 | Presentación de resultados |  |  |  |  |  |  | resources p [150%] → p [200%] |
| 14 | Entrega del proyecto | 2018-01-30 → 2018-03-02 (+31d) | 2018-01-30 → 2018-03-02 (+31d) |  |  |  | 13 → 8FF+12d, 13 |  |
